# exam_1

How a schedule from MS Project changed from version to version. A marks actual dates.

## Version 1 (saved 2013-09-18, file exam_2_base.mpp)

Note of the change: exam 2 finished and base project added

| ID | WBS | Task | Duration | Start | Finish | Predecessors | Total float | Constraint |
| --- | --- | --- | --- | --- | --- | --- | --- | --- |
| 1 |  | Project start | 0d | 2014-02-01 | 2014-02-01 |  | 150d |  |
| 2 | 2 | **Analysis/Software Requirements** | 82d | 2014-02-03 | 2014-05-29 |  | -23d |  |
| 3 |  | T1 Conduct needs analysis | 18d | 2014-02-03 | 2014-02-26 |  | -23d |  |
| 4 |  | T2 Draft preliminary software specifications | 24d | 2014-02-27 | 2014-04-01 | 3 | -23d |  |
| 5 |  | T3 Incorporate feedback on software specifications | 16d | 2014-04-16 | 2014-05-09 | 3, 4FS+10d | -23d | start no earlier than 2014-02-17 |
| 6 |  | Dev1 | 0d | 2014-05-09 | 2014-05-09 | 5FF | -9d |  |
| 7 |  | T4 Secure required resources | 14d | 2014-05-12 | 2014-05-29 | 4, 5 | -23d |  |
| 8 |  | Analysis finished | 0d | 2014-05-29 | 2014-05-29 | 2FF | 82d |  |
| 9 | 4 | **Design** | 48d | 2014-02-10 | 2014-04-16 | 2SS+25d | -10d |  |
| 10 |  | T5 Review preliminary software specifications | 28d | 2014-03-10 | 2014-04-16 |  | -30d |  |
| 11 |  | T6 Develop functional specifications | 15d | 2014-02-10 | 2014-02-28 | 10SS+10d | -30d | finish no later than 2014-02-28 |
| 12 |  | T7 Obtain approval to proceed | 12d | 2014-04-01 | 2014-04-16 | 10FF | 97d |  |
| 13 |  | Dev2 | 0d | 2014-04-16 | 2014-04-16 | 12FF | 97d |  |
| 14 |  | Design finished | 0d | 2014-04-16 | 2014-04-16 | 9FF | 97d |  |
| 15 | 6 | **Development** | 43d | 2014-05-16 | 2014-07-16 | 2FS-10d | -23d |  |
| 16 |  | T8 Review functional specifications | 16d | 2014-05-16 | 2014-06-09 |  | -23d |  |
| 17 |  | T9 Develop code | 13d | 2014-05-16 | 2014-06-04 | 16SS | -20d |  |
| 18 |  | T10 Development complete | 27d | 2014-06-10 | 2014-07-16 | 16, 17 | -23d |  |
| 19 |  | Development finished | 0d | 2014-06-15 | 2014-06-15 | 15FF | 0d | finish no later than 2014-06-15 |
| 20 | 8 | **Testing** | 55d | 2014-06-18 | 2014-09-02 | 9SS+14d, 15SS+22d | -36d |  |
| 21 |  | T11 Develop unit test plans | 19d | 2014-06-18 | 2014-07-14 |  | -36d |  |
| 22 |  | T12 Develop integration test plans | 24d | 2014-06-18 | 2014-07-21 | 21SS | -36d |  |
| 23 |  | Dev3 | 0d | 2014-07-21 | 2014-07-21 | 22FF | 32d |  |
| 24 |  | T13 Unit Testing | 19d | 2014-08-07 | 2014-09-02 | 21, 22FS+12d | -36d |  |
| 25 |  | T14 Integration Testing | 15d | 2014-07-15 | 2014-08-04 | 24 | -36d | start no later than 2014-07-15 |
| 26 |  | Testing finished | 0d | 2014-09-02 | 2014-09-02 | 20FF | 1d |  |
| 27 | 10 | **Training** | 48d | 2014-06-25 | 2014-08-31 | 20SS+5d | -11d |  |
| 28 |  | T15 Develop training specifications for end users | 37d | 2014-06-25 | 2014-08-14 |  | -11d |  |
| 29 |  | T16 Develop training materials | 22d | 2014-07-31 | 2014-08-31 | 28 | -11d | finish no later than 2014-08-31 |
| 30 |  | T17 Finalize training materials | 18d | 2014-07-29 | 2014-08-21 | 29FF-6d | 9d |  |
| 31 |  | Dev4 | 0d | 2014-08-21 | 2014-08-21 | 30FF | 9d |  |
| 32 |  | Training finished | 0d | 2014-08-31 | 2014-08-31 | 27FF | 3d |  |
| 33 | 12 | **Deployment** | 31d | 2014-07-23 | 2014-09-03 | 20SS+10d, 27SS+20d | -23d |  |
| 34 |  | T18 Determine final deployment strategy | 24d | 2014-07-23 | 2014-08-25 |  | -23d |  |
| 35 |  | T19 Secure deployment resources | 10d | 2014-08-12 | 2014-08-25 | 34FF | -16d |  |
| 36 |  | Dev5 | 0d | 2014-08-25 | 2014-08-25 | 35FF | -16d |  |
| 37 |  | T20 Deploy software | 21d | 2014-08-06 | 2014-09-03 | 34SS+10d | -23d |  |
| 38 |  | Deployment finished | 0d | 2014-09-03 | 2014-09-03 | 33FF | -23d |  |
| 39 |  | Project finished | 0d | 2014-08-01 | 2014-08-01 | 38FF | -23d | finish no later than 2014-08-01 |

## Version 2 (data date 2014-02-28, saved 2013-09-18, file exam_1.mpp)

Note of the change: exam finished

Last finish 2014-09-03 → 2014-08-21 (-13d). Complete tasks 0 → 2.

Added:

| ID | Task | Duration | Start | Finish | Constraint |
| --- | --- | --- | --- | --- | --- |
| 40 | **Meetings** | 82.5d | 2014-02-10 | 2014-06-09 |  |
| 41 | Meetings 1 | 4h | 2014-02-10 | 2014-02-10 | start no earlier than 2014-02-10 |
| 42 | Meetings 2 | 4h | 2014-04-14 | 2014-04-14 | start no earlier than 2014-04-14 |
| 43 | Meetings 3 | 4h | 2014-06-09 | 2014-06-09 | start no earlier than 2014-06-09 |

Changed:

| ID | Task | Start | Finish | Duration | Complete | Total float | Other |
| --- | --- | --- | --- | --- | --- | --- | --- |
| 1 | Project start |  |  |  |  | 150d → 141d | baseline start none → 2014-02-01; baseline finish none → 2014-02-01 |
| 2 | **Analysis/Software Requirements** | 2014-02-03 A | 2014-05-29 → 2014-05-06 (-23d) | 82d → 65d |  | -23d → 43.65d | baseline start none → 2014-02-03; baseline finish none → 2014-04-29 |
| 3 | T1 Conduct needs analysis |  |  |  |  | -23d → 47.65d | baseline start none → 2014-02-03; baseline finish none → 2014-02-26 |
| 4 | T2 Draft preliminary software specifications |  | 2014-04-01 → 2014-03-05 (-27d) | 24d → 5d |  | -23d → 47.65d | baseline start none → 2014-02-27; baseline finish none → 2014-03-05 |
| 5 | T3 Incorporate feedback on software specifications | 2014-04-16 → 2014-03-20 (-27d) | 2014-05-09 → 2014-04-08 (-31d) | 16d → 14d |  | -23d → 47.65d | resources Senior Developer; Junior Developer [200%] → Senior Developer; Junior Developer [350%]; baseline start none → 2014-03-20; baseline finish none → 2014-04-08 |
| 6 | Dev1 | 2014-05-09 → 2014-04-08 (-31d) | 2014-05-09 → 2014-04-08 (-31d) |  |  | -9d → 61.65d | baseline start none → 2014-04-08; baseline finish none → 2014-04-08 |
| 7 | T4 Secure required resources | 2014-05-12 → 2014-04-15 A (-27d) | 2014-05-29 → 2014-05-06 (-23d) |  |  | -23d → 43.65d | baseline start none → 2014-04-09; baseline finish none → 2014-04-29 |
| 8 | Analysis finished | 2014-05-29 → 2014-05-06 (-23d) | 2014-05-29 → 2014-05-06 (-23d) |  |  | 82d → 76d | baseline start none → 2014-04-29; baseline finish none → 2014-04-29 |
| 9 | **Design** | 2014-02-10 → 2014-02-20 A (+10d) |  | 48d → 40d | 0% → 46% | -10d → 88d | baseline start none → 2014-02-10; baseline finish none → 2014-04-16 |
| 10 | T5 Review preliminary software specifications | 2014-03-10 A |  |  | 0% → 30% | -30d → 88d | baseline start none → 2014-03-10; baseline finish none → 2014-04-16 |
| 11 | T6 Develop functional specifications | 2014-02-10 → 2014-02-20 A (+10d) | 2014-02-28 → 2014-03-12 (+12d) |  | 0% → 17% | -30d → -8d | baseline start none → 2014-02-10; baseline finish none → 2014-02-28 |
| 12 | T7 Obtain approval to proceed | 2014-04-01 → 2014-03-10 A (-22d) | 2014-04-16 → 2014-03-31 A (-16d) | 12d → 16d | 0% → 100% | 97d → none | baseline start none → 2014-03-13; baseline finish none → 2014-04-16 |
| 13 | Dev2 | 2014-04-16 → 2014-03-31 (-16d) | 2014-04-16 → 2014-03-31 (-16d) |  |  | 97d → 100d | baseline start none → 2014-04-16; baseline finish none → 2014-04-16 |
| 14 | Design finished |  |  |  |  | 97d → 88d | baseline start none → 2014-04-16; baseline finish none → 2014-04-16 |
| 15 | **Development** | 2014-05-16 → 2014-04-21 A (-25d) | 2014-07-16 → 2014-08-05 (+20d) | 43d → 74d | 0% → 59% | -23d → 0d | baseline start none → 2014-04-15; baseline finish none → 2014-06-12 |
| 16 | T8 Review functional specifications | 2014-05-16 → 2014-04-21 A (-25d) | 2014-06-09 → 2014-05-27 A (-13d) | 16d → 25d | 0% → 100% | -23d → none | resources Senior Developer; Junior Developer [200%] → Senior Developer; Junior Developer [400%]; baseline start none → 2014-04-15; baseline finish none → 2014-04-24 |
| 17 | T9 Develop code | 2014-05-16 → 2014-04-21 A (-25d) | 2014-06-04 → 2014-05-09 (-26d) |  | 0% → 18% | -20d → 24d | baseline start none → 2014-04-15; baseline finish none → 2014-05-05 |
| 18 | T10 Development complete | 2014-06-10 → 2014-06-30 A (+20d) | 2014-07-16 → 2014-08-05 (+20d) |  | 0% → 41% | -23d → -37d | baseline start none → 2014-05-06; baseline finish none → 2014-06-12 |
| 19 | Development finished |  |  |  |  | 0d → -37d | baseline start none → 2014-06-12; baseline finish none → 2014-06-12 |
| 20 | **Testing** | 2014-06-18 → 2014-05-23 A (-26d) | 2014-09-02 → 2014-08-08 (-25d) |  | 0% → 4% | -36d → 9d | baseline start none → 2014-05-19; baseline finish none → 2014-08-04 |
| 21 | T11 Develop unit test plans | 2014-06-18 → 2014-05-23 A (-26d) | 2014-07-14 → 2014-06-23 (-21d) | 19d → 20.12d | 0% → 15% | -36d → -3.12d | resources Project Manager [20%] → Project Manager [20%]; Junior Developer; baseline start none → 2014-05-19; baseline finish none → 2014-06-13 |
| 22 | T12 Develop integration test plans | 2014-06-18 → 2014-05-23 (-26d) | 2014-07-21 → 2014-06-26 (-25d) |  |  | -36d → -19d | baseline start none → 2014-05-19; baseline finish none → 2014-06-20 |
| 23 | Dev3 | 2014-07-21 → 2014-06-26 (-25d) | 2014-07-21 → 2014-06-26 (-25d) |  |  | 32d → 40d | baseline start none → 2014-06-20; baseline finish none → 2014-06-20 |
| 24 | T13 Unit Testing | 2014-08-07 → 2014-07-15 (-23d) | 2014-09-02 → 2014-08-08 (-25d) |  |  | -36d → -19d | baseline start none → 2014-07-09; baseline finish none → 2014-08-04 |
| 25 | T14 Integration Testing |  |  |  |  | -36d → -19d | baseline start none → 2014-07-15; baseline finish none → 2014-08-04 |
| 26 | Testing finished | 2014-09-02 → 2014-08-08 (-25d) | 2014-09-02 → 2014-08-08 (-25d) |  |  | 1d → 9d | baseline start none → 2014-08-04; baseline finish none → 2014-08-04 |
| 27 | **Training** | 2014-06-25 → 2014-05-30 (-26d) | 2014-08-31 → 2014-08-21 (-10d) | 48d → 59d |  | -11d → 0d | baseline start none → 2014-05-26; baseline finish none → 2014-08-15 |
| 28 | T15 Develop training specifications for end users | 2014-06-25 → 2014-05-30 (-26d) | 2014-08-14 → 2014-07-22 (-23d) |  |  | -11d → 0d | baseline start none → 2014-05-26; baseline finish none → 2014-07-16 |
| 29 | T16 Develop training materials | 2014-07-31 → 2014-07-23 (-8d) | 2014-08-31 → 2014-08-21 (-10d) |  |  | -11d → 0d | baseline start none → 2014-07-17; baseline finish none → 2014-08-15 |
| 30 | T17 Finalize training materials | 2014-07-29 → 2014-07-21 (-8d) | 2014-08-21 → 2014-08-13 (-8d) |  |  | 9d → 6d | baseline start none → 2014-07-15; baseline finish none → 2014-08-07 |
| 31 | Dev4 | 2014-08-21 → 2014-08-13 (-8d) | 2014-08-21 → 2014-08-13 (-8d) |  |  | 9d → 6d | baseline start none → 2014-08-07; baseline finish none → 2014-08-07 |
| 32 | Training finished | 2014-08-31 → 2014-08-21 (-10d) | 2014-08-31 → 2014-08-21 (-10d) |  |  | 3d → 0d | baseline start none → 2014-08-15; baseline finish none → 2014-08-15 |
| 33 | **Deployment** | 2014-07-23 → 2014-06-30 (-23d) | 2014-09-03 → 2014-08-11 (-23d) |  |  | -23d → -6d | baseline start none → 2014-06-24; baseline finish none → 2014-08-05 |
| 34 | T18 Determine final deployment strategy | 2014-07-23 → 2014-06-30 (-23d) | 2014-08-25 → 2014-07-31 (-25d) |  |  | -23d → -6d | baseline start none → 2014-06-24; baseline finish none → 2014-07-25 |
| 35 | T19 Secure deployment resources | 2014-08-12 → 2014-07-18 (-25d) | 2014-08-25 → 2014-07-31 (-25d) |  |  | -16d → 1d | baseline start none → 2014-07-14; baseline finish none → 2014-07-25 |
| 36 | Dev5 | 2014-08-25 → 2014-07-31 (-25d) | 2014-08-25 → 2014-07-31 (-25d) |  |  | -16d → 1d | baseline start none → 2014-07-25; baseline finish none → 2014-07-25 |
| 37 | T20 Deploy software | 2014-08-06 → 2014-07-14 (-23d) | 2014-09-03 → 2014-08-11 (-23d) |  |  | -23d → -6d | baseline start none → 2014-07-08; baseline finish none → 2014-08-05 |
| 38 | Deployment finished | 2014-09-03 → 2014-08-11 (-23d) | 2014-09-03 → 2014-08-11 (-23d) |  |  | -23d → -6d | baseline start none → 2014-08-05; baseline finish none → 2014-08-05 |
| 39 | Project finished |  |  |  |  | -23d → -6d | baseline start none → 2014-08-01; baseline finish none → 2014-08-01 |

## Version 3 (data date 2014-02-28, saved 2013-09-18, file exam_2.mpp)

Note of the change: exam 2 finished and base project added

Last finish 2014-08-21 → 2014-08-29 (+8d).

Changed:

| ID | Task | Start | Finish | Duration | Total float | Other |
| --- | --- | --- | --- | --- | --- | --- |
| 2 | **Analysis/Software Requirements** |  | 2014-05-06 → 2014-05-21 (+15d) | 65d → 76d | 43.65d → 37.16d | baseline finish 2014-04-29 → 2014-05-21 |
| 4 | T2 Draft preliminary software specifications |  | 2014-03-05 → 2014-04-01 (+27d) | 5d → 24d | 47.65d → 37.16d | baseline finish 2014-03-05 → 2014-04-01 |
| 5 | T3 Incorporate feedback on software specifications | 2014-03-20 → 2014-04-16 (+27d) | 2014-04-08 → 2014-04-30 (+22d) | 14d → 10d | 47.65d → 37.16d | baseline start 2014-03-20 → 2014-04-16; baseline finish 2014-04-08 → 2014-04-30 |
| 6 | Dev1 | 2014-04-08 → 2014-04-30 (+22d) | 2014-04-08 → 2014-04-30 (+22d) |  | 61.65d → 51.16d | baseline start 2014-04-08 → 2014-04-30; baseline finish 2014-04-08 → 2014-04-30 |
| 7 | T4 Secure required resources |  | 2014-05-06 → 2014-05-21 (+15d) |  | 43.65d → 37.16d | baseline start 2014-04-09 → 2014-05-02; baseline finish 2014-04-29 → 2014-05-21 |
| 8 | Analysis finished | 2014-05-06 → 2014-05-21 (+15d) | 2014-05-06 → 2014-05-21 (+15d) |  | 76d → 71d | baseline start 2014-04-29 → 2014-05-21; baseline finish 2014-04-29 → 2014-05-21 |
| 15 | **Development** | 2014-04-21 A → 2014-05-08 A (+17d) |  | 74d → 63d |  | baseline start 2014-04-15 → 2014-05-08; baseline finish 2014-06-12 → 2014-07-03 |
| 16 | T8 Review functional specifications | 2014-04-21 A → 2014-05-08 A (+17d) | 2014-05-27 A → 2014-06-12 A (+16d) |  |  | baseline start 2014-04-15 → 2014-05-08; baseline finish 2014-04-24 → 2014-05-19 |
| 17 | T9 Develop code | 2014-04-21 A → 2014-05-08 A (+17d) | 2014-05-09 → 2014-05-26 (+17d) |  | 24d → 13d | baseline start 2014-04-15 → 2014-05-08; baseline finish 2014-05-05 → 2014-05-26 |
| 18 | T10 Development complete |  |  |  |  | baseline start 2014-05-06 → 2014-05-27; baseline finish 2014-06-12 → 2014-07-03 |
| 19 | Development finished |  |  |  |  | baseline start 2014-06-12 → 2014-06-15; baseline finish 2014-06-12 → 2014-06-15 |
| 20 | **Testing** | 2014-05-23 A → 2014-06-10 A (+18d) | 2014-08-08 → 2014-08-25 (+17d) |  | 9d → 4d | baseline start 2014-05-19 → 2014-06-10; baseline finish 2014-08-04 → 2014-08-25 |
| 21 | T11 Develop unit test plans | 2014-05-23 A → 2014-06-10 A (+18d) | 2014-06-23 → 2014-07-08 (+15d) |  | -3.12d → -14.12d | baseline start 2014-05-19 → 2014-06-10; baseline finish 2014-06-13 → 2014-07-04 |
| 22 | T12 Develop integration test plans | 2014-05-23 → 2014-06-10 (+18d) | 2014-06-26 → 2014-07-11 (+15d) |  | -19d → -30d | baseline start 2014-05-19 → 2014-06-10; baseline finish 2014-06-20 → 2014-07-11 |
| 23 | Dev3 | 2014-06-26 → 2014-07-11 (+15d) | 2014-06-26 → 2014-07-11 (+15d) |  | 40d → 35d | baseline start 2014-06-20 → 2014-07-11; baseline finish 2014-06-20 → 2014-07-11 |
| 24 | T13 Unit Testing | 2014-07-15 → 2014-07-30 (+15d) | 2014-08-08 → 2014-08-25 (+17d) |  | -19d → -30d | baseline start 2014-07-09 → 2014-07-30; baseline finish 2014-08-04 → 2014-08-25 |
| 26 | Testing finished | 2014-08-08 → 2014-08-25 (+17d) | 2014-08-08 → 2014-08-25 (+17d) |  | 9d → 4d | baseline start 2014-08-04 → 2014-08-25; baseline finish 2014-08-04 → 2014-08-25 |
| 27 | **Training** | 2014-05-30 → 2014-06-17 (+18d) | 2014-08-21 → 2014-08-29 (+8d) | 59d → 54d |  | baseline start 2014-05-26 → 2014-06-17; baseline finish 2014-08-15 → 2014-08-29 |
| 28 | T15 Develop training specifications for end users | 2014-05-30 → 2014-06-17 (+18d) | 2014-07-22 → 2014-08-06 (+15d) |  |  | baseline start 2014-05-26 → 2014-06-17; baseline finish 2014-07-16 → 2014-08-06 |
| 29 | T16 Develop training materials | 2014-07-23 → 2014-08-07 (+15d) | 2014-08-21 → 2014-08-29 (+8d) | 22d → 17d |  | resources Toner [1000%]; Junior Developer [200%]; Senior Developer → Toner [1000%]; Junior Developer [400%]; Senior Developer; baseline start 2014-07-17 → 2014-08-07; baseline finish 2014-08-15 → 2014-08-29 |
| 30 | T17 Finalize training materials | 2014-07-21 → 2014-07-29 (+8d) | 2014-08-13 → 2014-08-21 (+8d) |  |  | baseline start 2014-07-15 → 2014-07-29; baseline finish 2014-08-07 → 2014-08-21 |
| 31 | Dev4 | 2014-08-13 → 2014-08-21 (+8d) | 2014-08-13 → 2014-08-21 (+8d) |  |  | baseline start 2014-08-07 → 2014-08-21; baseline finish 2014-08-07 → 2014-08-21 |
| 32 | Training finished | 2014-08-21 → 2014-08-29 (+8d) | 2014-08-21 → 2014-08-29 (+8d) |  |  | baseline start 2014-08-15 → 2014-08-29; baseline finish 2014-08-15 → 2014-08-29 |
| 33 | **Deployment** | 2014-06-30 → 2014-07-15 (+15d) | 2014-08-11 → 2014-08-26 (+15d) |  | -6d → -17d | baseline start 2014-06-24 → 2014-07-15; baseline finish 2014-08-05 → 2014-08-26 |
| 34 | T18 Determine final deployment strategy | 2014-06-30 → 2014-07-15 (+15d) | 2014-07-31 → 2014-07-24 (-7d) | 24d → 8d | -6d → -17d | resources Web designer; Senior Developer → Web designer; Senior Developer; Junior Developer [400%]; baseline start 2014-06-24 → 2014-07-15; baseline finish 2014-07-25 → 2014-07-24 |
| 35 | T19 Secure deployment resources | 2014-07-18 → 2014-07-15 (-3d) | 2014-07-31 → 2014-07-28 (-3d) |  | 1d → 4d | baseline start 2014-07-14 → 2014-07-15; baseline finish 2014-07-25 → 2014-07-28 |
| 36 | Dev5 | 2014-07-31 → 2014-07-28 (-3d) | 2014-07-31 → 2014-07-28 (-3d) |  | 1d → 4d | baseline start 2014-07-25 → 2014-07-28; baseline finish 2014-07-25 → 2014-07-28 |
| 37 | T20 Deploy software | 2014-07-14 → 2014-07-29 (+15d) | 2014-08-11 → 2014-08-26 (+15d) |  | -6d → -17d | resources Junior Developer [300%]; Senior Developer → Junior Developer [600%]; Senior Developer; baseline start 2014-07-08 → 2014-07-29; baseline finish 2014-08-05 → 2014-08-26 |
| 38 | Deployment finished | 2014-08-11 → 2014-08-26 (+15d) | 2014-08-11 → 2014-08-26 (+15d) |  | -6d → -17d | baseline start 2014-08-05 → 2014-08-26; baseline finish 2014-08-05 → 2014-08-26 |
