# exercise_1

How a schedule from MS Project changed from version to version. A marks actual dates.

## Version 1 (saved 2013-08-23, file exercise_1.mpp)

Note of the change: lab exercise till task 7 included

| ID | WBS | Task | Duration | Start | Finish | Predecessors | Total float | Constraint |
| --- | --- | --- | --- | --- | --- | --- | --- | --- |
| 1 | 1 | **Project start** | 85d | 2013-10-01 | 2014-01-27 |  | -5d | start no earlier than 2013-10-01 |
| 2 | 1.1 | **Phase 1** | 41d | 2013-10-01 | 2013-11-26 |  | -5d |  |
| 3 |  | T1 workshop market analysis | 8d | 2013-10-01 | 2013-10-10 |  | 5d |  |
| 4 |  | T2 recruit new staff | 14d | 2013-10-15 | 2013-11-01 |  | -7d | start no earlier than 2013-10-15 |
| 5 |  | Dev1 | 0d | 2013-11-01 | 2013-11-01 | 4FF | 61d |  |
| 6 |  | T3 choose new basic equipment | 7d | 2013-11-18 | 2013-11-26 | 4FS+10d, 3 | -15d |  |
| 7 |  | Phase 1 finished | 0d | 2013-11-26 | 2013-11-26 | 2FF | 44d |  |
| 8 | 1.3 | **Phase 2** | 30d | 2013-11-08 | 2013-12-19 |  | -15d |  |
| 9 |  | T4 choose new special equipment | 9d | 2013-11-08 | 2013-11-20 | 3, 4FS+4d | -15d |  |
| 10 |  | T5 draw new layout | 8d | 2013-12-02 | 2013-12-11 | 6SS+10d | -15d |  |
| 11 |  | Dev2 | 0d | 2013-12-11 | 2013-12-11 | 10FF | 33d |  |
| 12 |  | T6 train new staff | 15d | 2013-11-12 | 2013-12-02 | 9 | -8d | finish no later than 2013-12-02 |
| 13 |  | T7 order new basic equipment for the workshop | 7d | 2013-12-03 | 2013-12-11 | 10FF | -2d |  |
| 14 |  | T8 order new special equipment for the workshop | 13d | 2013-12-03 | 2013-12-19 | 12 | 0d |  |
| 15 |  | Dev3 | 0d | 2013-12-19 | 2013-12-19 | 14FF | 27d |  |
| 16 |  | T9 visit and supervise the rooms for the workshop | 13d | 2013-11-10 | 2013-11-27 | 6SS, 10SS | -15d | start no later than 2013-11-10 |
| 17 |  | Phase 2 finished | 0d | 2013-12-19 | 2013-12-19 | 8FF | 27d |  |
| 18 | 1.5 | **Phase 3** | 52d | 2013-11-15 | 2014-01-27 |  | -8d |  |
| 19 |  | T10 unpack and inspect equipment | 7d | 2013-12-20 | 2013-12-30 | 13, 14 | -8d |  |
| 20 |  | T11 install services | 9d | 2013-11-15 | 2013-11-27 | 16FF | 15d |  |
| 21 |  | T12 install equipment | 11d | 2013-12-31 | 2014-01-14 | 19, 20 | -8d |  |
| 22 |  | Dev4 | 0d | 2014-01-14 | 2014-01-14 | 21FF | 1d |  |
| 23 |  | T13 workshop execution | 9d | 2014-01-15 | 2014-01-27 | 21 | -8d |  |
| 24 |  | Phase 3 finished | 0d | 2014-01-27 | 2014-01-27 | 18FF | -8d |  |
| 25 |  | Project finished | 0d | 2014-01-15 | 2014-01-15 | 24FF | -8d | must finish on 2014-01-15 |

## Version 2 (saved 2013-08-23, file exercise_1.mpp)

Note of the change: first try, not correct

Last finish 2014-01-27 → 2014-01-15 (-12d).

Added:

| ID | Task | Duration | Start | Finish | Constraint |
| --- | --- | --- | --- | --- | --- |
| 26 | **Meetings** | 70.5d | 2013-10-07 | 2014-01-13 |  |
| 27 | Meetings 1 | 4h | 2013-10-07 | 2013-10-07 | start no earlier than 2013-10-07 |
| 28 | Meetings 2 | 4h | 2013-10-21 | 2013-10-21 | start no earlier than 2013-10-21 |
| 29 | Meetings 3 | 4h | 2013-11-04 | 2013-11-04 | start no earlier than 2013-11-04 |
| 30 | Meetings 4 | 4h | 2013-11-18 | 2013-11-18 | start no earlier than 2013-11-18 |
| 31 | Meetings 5 | 4h | 2013-12-02 | 2013-12-02 | start no earlier than 2013-12-02 |
| 32 | Meetings 6 | 4h | 2013-12-16 | 2013-12-16 | start no earlier than 2013-12-16 |
| 33 | Meetings 7 | 4h | 2013-12-30 | 2013-12-30 | start no earlier than 2013-12-30 |
| 34 | Meetings 8 | 4h | 2014-01-13 | 2014-01-13 | start no earlier than 2014-01-13 |

Changed:

| ID | Task | Start | Finish | Duration | Total float | Other |
| --- | --- | --- | --- | --- | --- | --- |
| 1 | **Project start** |  | 2014-01-27 → 2014-01-15 (-12d) | 85d → 77d | -5d → 0d |  |
| 2 | **Phase 1** |  | 2013-11-26 → 2013-11-12 (-14d) | 41d → 31d | -5d → 5d |  |
| 3 | T1 workshop market analysis |  |  |  |  | resources none → SR; PM [20%] |
| 4 | T2 recruit new staff |  | 2013-11-01 → 2013-10-18 (-14d) | 14d → 4d | -7d → -5d | resources none → PM [20%]; C [50%] |
| 5 | Dev1 | 2013-11-01 → 2013-10-18 (-14d) | 2013-11-01 → 2013-10-18 (-14d) |  | 61d → 63d |  |
| 6 | T3 choose new basic equipment | 2013-11-18 → 2013-11-04 (-14d) | 2013-11-26 → 2013-11-12 (-14d) |  | -15d → -5d | resources none → SR; C [200%] |
| 7 | Phase 1 finished | 2013-11-26 → 2013-11-12 (-14d) | 2013-11-26 → 2013-11-12 (-14d) |  | 44d → 46d |  |
| 8 | **Phase 2** | 2013-11-08 → 2013-10-24 (-15d) | 2013-12-19 → 2013-12-09 (-10d) | 30d → 33d | -15d → 1d |  |
| 9 | T4 choose new special equipment | 2013-11-08 → 2013-10-25 (-14d) | 2013-11-20 → 2013-10-30 (-21d) | 9d → 4d | -15d → 0d | resources none → C [450%] |
| 10 | T5 draw new layout | 2013-12-02 → 2013-11-18 (-14d) | 2013-12-11 → 2013-11-27 (-14d) |  | -15d → -5d | resources none → SR; C [300%] |
| 11 | Dev2 | 2013-12-11 → 2013-11-27 (-14d) | 2013-12-11 → 2013-11-27 (-14d) |  | 33d → 35d |  |
| 12 | T6 train new staff | 2013-11-12 → 2013-10-31 (-12d) | 2013-12-02 → 2013-11-20 (-12d) |  | -8d → 0d | resources none → Teacher; C [200%] |
| 13 | T7 order new basic equipment for the workshop | 2013-12-03 → 2013-10-24 (-40d) | 2013-12-11 → 2013-11-27 (-14d) | 7d → 25d | -2d → 8d | resources none → PM [20%] |
| 14 | T8 order new special equipment for the workshop | 2013-12-03 → 2013-11-21 (-12d) | 2013-12-19 → 2013-12-09 (-10d) |  |  | constraint none → finish no later than 2013-12-15; resources none → SR; C [200%] |
| 15 | Dev3 | 2013-12-19 → 2013-12-09 (-10d) | 2013-12-19 → 2013-12-09 (-10d) |  |  |  |
| 16 | T9 visit and supervise the rooms for the workshop |  |  |  | -15d → -5d | resources none → Teacher; C [200%] |
| 17 | Phase 2 finished | 2013-12-19 → 2013-12-09 (-10d) | 2013-12-19 → 2013-12-09 (-10d) |  |  |  |
| 18 | **Phase 3** |  | 2014-01-27 → 2014-01-15 (-12d) | 52d → 44d | -8d → 0d |  |
| 19 | T10 unpack and inspect equipment | 2013-12-20 → 2013-12-10 (-10d) | 2013-12-30 → 2013-12-18 (-12d) |  | -8d → 0d | resources none → SR; C [200%] |
| 20 | T11 install services |  |  |  |  | resources none → PM [20%]; C |
| 21 | T12 install equipment | 2013-12-31 → 2013-12-19 (-12d) | 2014-01-14 → 2014-01-02 (-12d) |  | -8d → 0d | resources none → SR; C [200%] |
| 22 | Dev4 | 2014-01-14 → 2014-01-02 (-12d) | 2014-01-14 → 2014-01-02 (-12d) |  | 1d → 9d |  |
| 23 | T13 workshop execution | 2014-01-15 → 2014-01-03 (-12d) | 2014-01-27 → 2014-01-15 (-12d) |  | -8d → 0d | resources none → PM [20%]; E [2000%] |
| 24 | Phase 3 finished | 2014-01-27 → 2014-01-15 (-12d) | 2014-01-27 → 2014-01-15 (-12d) |  | -8d → 0d |  |

## Version 3 (saved 2013-08-27, file exercise_2.mpp)

Note of the change: second try tasks 1-7

Last finish 2014-01-15 → 2014-01-27 (+12d).

Added:

| ID | Task | Duration | Start | Finish | Predecessors | Constraint |
| --- | --- | --- | --- | --- | --- | --- |
| 1 | **Organization of a workshop** | 85d | 2013-10-01 | 2014-01-27 |  | start no earlier than 2013-10-01 |
| 6 | Deliverable 1 | 0d | 2013-11-01 | 2013-11-01 | 5FF |  |
| 12 | Deliverable 2 | 0d | 2013-11-12 | 2013-11-12 | 11FF |  |
| 16 | Deliverable 3 | 0d | 2013-12-19 | 2013-12-19 | 15FF |  |
| 20 | T10 unpack and inspect | 7d | 2013-12-20 | 2013-12-30 | 14, 15 |  |
| 23 | Deliverable 4 | 0d | 2014-01-14 | 2014-01-14 | 22FF |  |

Removed: 1 Project start; 11 Dev2; 13 T7 order new basic equipment for the workshop; 15 Dev3; 22 Dev4; 26 Meetings; 27 Meetings 1; 28 Meetings 2; 29 Meetings 3; 30 Meetings 4; 31 Meetings 5; 32 Meetings 6; 33 Meetings 7; 34 Meetings 8

Changed:

| ID | Task | Start | Finish | Duration | Total float | Predecessors | Other |
| --- | --- | --- | --- | --- | --- | --- | --- |
| 2 | Project start | 2013-10-18 → 2013-10-01 (-17d) | 2013-10-18 → 2013-10-01 (-17d) |  | 63d → 11d | 5FF → none | was named Dev1 |
| 3 | **Phase 1** |  | 2013-11-12 → 2013-11-01 (-11d) | 31d → 24d | 5d → 11d | none → 2 |  |
| 4 | T1 workshop market analysis |  |  |  | 5d → 11d |  | resources SR; PM [20%] → none |
| 5 | T2 recruit new staff |  | 2013-10-18 → 2013-11-01 (+14d) | 4d → 14d | -5d → 6d |  | resources PM [20%]; C [50%] → none |
| 7 | T3 choose new basic equipment | 2013-11-04 → 2013-10-18 (-17d) | 2013-11-12 → 2013-10-28 (-15d) |  | -5d → 6d | 5FS+10d, 4 → 4, 5SF+10d | resources SR; C [200%] → none |
| 8 | Phase 1 finished | 2013-11-12 → 2013-11-01 (-11d) | 2013-11-12 → 2013-11-01 (-11d) |  | 46d → 61d |  |  |
| 9 | **Phase 2** | 2013-10-24 → 2013-10-11 (-13d) | 2013-12-09 → 2013-12-19 (+10d) | 33d → 50d | 1d → 13d |  |  |
| 10 | T4 choose new special equipment | 2013-10-25 → 2013-10-11 (-14d) | 2013-10-30 → 2013-10-23 (-7d) | 4d → 9d | 0d → 13d | 4, 5FS+4d → 4, 5SF+4d | resources C [450%] → none |
| 11 | T5 draw new layout | 2013-11-18 → 2013-11-01 (-17d) | 2013-11-27 → 2013-11-12 (-15d) |  | -5d → 6d |  | resources SR; C [300%] → none |
| 13 | T6 train new staff | 2013-10-31 → 2013-11-12 (+12d) | 2013-11-20 → 2013-12-02 (+12d) |  |  |  | constraint finish no later than 2013-12-02 → must finish on 2013-12-02; resources Teacher; C [200%] → none |
| 14 | T7 order new basic equipment | 2013-11-21 → 2013-11-04 (-17d) | 2013-12-09 → 2013-11-12 (-27d) | 13d → 7d | 0d → 19d | 13 → 11FF | was named T8 order new special equipment for the workshop; constraint finish no later than 2013-12-15 → none; resources SR; C [200%] → none |
| 15 | T8 order new special equipment | 2013-11-10 → 2013-12-03 (+23d) | 2013-11-27 → 2013-12-19 (+22d) |  | -5d → -8d | 7SS, 11SS → 13 | was named T9 visit and supervise the rooms for the workshop; constraint start no later than 2013-11-10 → none; resources Teacher; C [200%] → none |
| 17 | T9 visit and supervise the rooms | 2013-12-10 → 2013-11-01 (-39d) | 2013-12-18 → 2013-11-19 (-29d) | 7d → 13d | 0d → 6d | T7 order new basic equipment for the workshop, 14 → 7SS, 11SS | was named T10 unpack and inspect equipment; constraint none → start no later than 2013-11-10; resources SR; C [200%] → none |
| 18 | Phase 2 finished | 2013-12-09 → 2013-12-19 (+10d) | 2013-12-09 → 2013-12-19 (+10d) |  |  |  |  |
| 19 | **Phase 3** | 2013-11-15 → 2013-11-07 (-8d) | 2014-01-15 → 2014-01-27 (+12d) | 44d → 58d | 0d → -8d |  |  |
| 21 | T11 install services | 2013-11-15 → 2013-11-07 (-8d) | 2013-11-27 → 2013-11-19 (-8d) |  | 15d → 21d | 15FF → 17FF | resources PM [20%]; C → none |
| 22 | T12 install equipment | 2013-12-19 → 2013-12-31 (+12d) | 2014-01-02 → 2014-01-14 (+12d) |  | 0d → -8d | 17, 21 → 20, 21 | resources SR; C [200%] → none |
| 24 | T13 workshop execution | 2014-01-03 → 2014-01-15 (+12d) | 2014-01-15 → 2014-01-27 (+12d) |  | 0d → -8d |  | resources PM [20%]; E [2000%] → none |
| 25 | Phase 3 finished | 2014-01-15 → 2014-01-27 (+12d) | 2014-01-15 → 2014-01-27 (+12d) |  | 0d → -8d |  |  |

## Version 4 (saved 2013-08-28, file exercise_2.mpp)

Note of the change: task 7 + 8

Last finish stays 2014-01-27.

Changed:

| ID | Task | Other |
| --- | --- | --- |
| 4 | T1 workshop market analysis | resources none → SR; PM [20%] |
| 5 | T2 recruit new staff | resources none → PM [20%] |
| 7 | T3 choose new basic equipment | resources none → SR; C [200%] |
| 10 | T4 choose new special equipment | resources none → C [200%] |
| 11 | T5 draw new layout | resources none → SR; C [300%] |
| 13 | T6 train new staff | resources none → Te; C [200%] |
| 14 | T7 order new basic equipment | resources none → PM [20%] |
| 15 | T8 order new special equipment | resources none → SR; C [200%] |
| 17 | T9 visit and supervise the rooms | resources none → Te; C [200%] |
| 20 | T10 unpack and inspect | resources none → SR; C [200%] |
| 21 | T11 install services | resources none → PM [20%] |
| 22 | T12 install equipment | resources none → SR; C [200%] |
| 24 | T13 workshop execution | resources none → PM [20%]; E [2000%] |

## Version 5 (saved 2013-09-04, file exercise_2.mpp)

Note of the change: task 10 - 12 resolved

Last finish 2014-01-27 → 2014-01-15 (-12d).

Added:

| ID | Task | Duration | Start | Finish | Constraint |
| --- | --- | --- | --- | --- | --- |
| 27 | **Project meetings** | 70.5d | 2013-10-07 | 2014-01-13 |  |
| 28 | Project meetings 1 | 4h | 2013-10-07 | 2013-10-07 | start no earlier than 2013-10-07 |
| 29 | Project meetings 2 | 4h | 2013-10-21 | 2013-10-21 | start no earlier than 2013-10-21 |
| 30 | Project meetings 3 | 4h | 2013-11-04 | 2013-11-04 | start no earlier than 2013-11-04 |
| 31 | Project meetings 4 | 4h | 2013-11-18 | 2013-11-18 | start no earlier than 2013-11-18 |
| 32 | Project meetings 5 | 4h | 2013-12-02 | 2013-12-02 | start no earlier than 2013-12-02 |
| 33 | Project meetings 6 | 4h | 2013-12-16 | 2013-12-16 | start no earlier than 2013-12-16 |
| 34 | Project meetings 7 | 4h | 2013-12-30 | 2013-12-30 | start no earlier than 2013-12-30 |
| 35 | Project meetings 8 | 4h | 2014-01-13 | 2014-01-13 | start no earlier than 2014-01-13 |

Changed:

| ID | Task | Start | Finish | Duration | Total float | Other |
| --- | --- | --- | --- | --- | --- | --- |
| 1 | **Organization of a workshop** |  | 2014-01-27 → 2014-01-15 (-12d) | 85d → 77d |  |  |
| 3 | **Phase 1** |  | 2013-11-01 → 2013-10-28 (-4d) | 24d → 20d |  |  |
| 5 | T2 recruit new staff |  | 2013-11-01 → 2013-10-18 (-14d) | 14d → 4d |  | resources PM [20%] → PM [20%]; C [50%] |
| 6 | Deliverable 1 | 2013-11-01 → 2013-10-18 (-14d) | 2013-11-01 → 2013-10-18 (-14d) |  | 61d → 65d |  |
| 8 | Phase 1 finished | 2013-11-01 → 2013-10-28 (-4d) | 2013-11-01 → 2013-10-28 (-4d) |  | 61d → 59d |  |
| 9 | **Phase 2** | 2013-10-11 → 2013-10-09 (-2d) | 2013-12-19 → 2013-12-09 (-10d) | 50d → 44d | 13d → 15d |  |
| 14 | T7 order new basic equipment | 2013-11-04 → 2013-10-09 (-26d) |  | 7d → 25d |  |  |
| 15 | T8 order new special equipment |  | 2013-12-19 → 2013-12-09 (-10d) | 13d → 5d | -8d → 0d | constraint none → finish no later than 2013-12-15; resources SR; C [200%] → SR; C [400%] |
| 16 | Deliverable 3 | 2013-12-19 → 2013-12-09 (-10d) | 2013-12-19 → 2013-12-09 (-10d) |  |  |  |
| 18 | Phase 2 finished | 2013-12-19 → 2013-12-09 (-10d) | 2013-12-19 → 2013-12-09 (-10d) |  |  |  |
| 19 | **Phase 3** |  | 2014-01-27 → 2014-01-15 (-12d) | 58d → 50d | -8d → 0d |  |
| 20 | T10 unpack and inspect | 2013-12-20 → 2013-12-10 (-10d) | 2013-12-30 → 2013-12-18 (-12d) |  | -8d → 0d |  |
| 21 | T11 install services |  |  |  |  | resources PM [20%] → PM [20%]; C |
| 22 | T12 install equipment | 2013-12-31 → 2013-12-19 (-12d) | 2014-01-14 → 2014-01-02 (-12d) |  | -8d → 0d |  |
| 23 | Deliverable 4 | 2014-01-14 → 2014-01-02 (-12d) | 2014-01-14 → 2014-01-02 (-12d) |  | 1d → 9d |  |
| 24 | T13 workshop execution | 2014-01-15 → 2014-01-03 (-12d) | 2014-01-27 → 2014-01-15 (-12d) |  | -8d → 0d |  |
| 25 | Phase 3 finished | 2014-01-27 → 2014-01-15 (-12d) | 2014-01-27 → 2014-01-15 (-12d) |  | -8d → 0d |  |

## Version 6 (saved 2013-09-09, file exercise_2.mpp)

Note of the change: exercise done

Last finish 2014-01-15 → 2014-01-28 (+13d). Complete tasks 0 → 2.

Changed:

| ID | Task | Start | Finish | Duration | Complete | Total float | Other |
| --- | --- | --- | --- | --- | --- | --- | --- |
| 1 | **Organization of a workshop** | 2013-10-01 A | 2014-01-15 → 2014-01-28 (+13d) | 77d → 86d | 0% → 51% |  | baseline start none → 2013-10-01; baseline finish none → 2014-01-15 |
| 2 | Project start |  |  |  |  | 11d → 74.62d | baseline start none → 2013-10-01; baseline finish none → 2013-10-01 |
| 3 | **Phase 1** | 2013-10-01 A | 2013-10-28 → 2013-11-14 (+17d) | 20d → 33d | 0% → 66% | 11d → 53d | baseline start none → 2013-10-01; baseline finish none → 2013-10-28 |
| 4 | T1 workshop market analysis | 2013-10-01 A |  |  | 0% → 25% | 11d → 21.62d | baseline start none → 2013-10-01; baseline finish none → 2013-10-10 |
| 5 | T2 recruit new staff | 2013-10-15 → 2013-10-18 A (+3d) | 2013-10-18 → 2013-10-23 (+5d) |  |  | 6d → 69d | baseline start none → 2013-10-15; baseline finish none → 2013-10-18 |
| 6 | Deliverable 1 | 2013-10-18 → 2013-10-23 (+5d) | 2013-10-18 → 2013-10-23 (+5d) |  |  | 65d → 69d | baseline start none → 2013-10-18; baseline finish none → 2013-10-18 |
| 7 | T3 choose new basic equipment | 2013-10-18 → 2013-10-23 A (+5d) | 2013-10-28 → 2013-11-14 A (+17d) | 7d → 17d | 0% → 100% | 6d → none | baseline start none → 2013-10-18; baseline finish none → 2013-10-28 |
| 8 | Phase 1 finished | 2013-10-28 → 2013-11-14 (+17d) | 2013-10-28 → 2013-11-14 (+17d) |  |  | 59d → 53d | baseline start none → 2013-10-28; baseline finish none → 2013-10-28 |
| 9 | **Phase 2** | 2013-10-09 → 2013-10-11 A (+2d) | 2013-12-09 → 2013-12-20 (+11d) | 44d → 51d | 0% → 64% | 15d → 27d | baseline start none → 2013-10-09; baseline finish none → 2013-12-09 |
| 10 | T4 choose new special equipment | 2013-10-11 A | 2013-10-23 → 2013-10-25 (+2d) | 9d → 10.88d | 0% → 28% | 13d → 18.62d | baseline start none → 2013-10-11; baseline finish none → 2013-10-23 |
| 11 | T5 draw new layout | 2013-11-01 → 2013-11-06 (+5d) | 2013-11-12 → 2013-11-15 (+3d) |  |  | 6d → 3d | baseline start none → 2013-11-01; baseline finish none → 2013-11-12 |
| 12 | Deliverable 2 | 2013-11-12 → 2013-11-15 (+3d) | 2013-11-12 → 2013-11-15 (+3d) |  |  | 48d → 52d | baseline start none → 2013-11-12; baseline finish none → 2013-11-12 |
| 13 | T6 train new staff | 2013-11-12 A |  |  | 0% → 50% |  | baseline start none → 2013-11-12; baseline finish none → 2013-12-02 |
| 14 | T7 order new basic equipment | 2013-10-09 → 2013-10-14 A (+5d) | 2013-11-12 → 2013-12-20 A (+38d) | 25d → 50d | 0% → 100% | 19d → none | baseline start none → 2013-10-09; baseline finish none → 2013-11-12 |
| 15 | T8 order new special equipment | 2013-12-03 → 2013-12-07 A (+4d) | 2013-12-09 → 2013-12-13 (+4d) |  | 0% → 95% |  | baseline start none → 2013-12-03; baseline finish none → 2013-12-09 |
| 16 | Deliverable 3 | 2013-12-09 → 2013-12-13 (+4d) | 2013-12-09 → 2013-12-13 (+4d) |  |  | 27d → 32d | baseline start none → 2013-12-09; baseline finish none → 2013-12-09 |
| 17 | T9 visit and supervise the rooms | 2013-11-01 → 2013-11-06 (+5d) | 2013-11-19 → 2013-11-22 (+3d) |  |  | 6d → 3d | baseline start none → 2013-11-01; baseline finish none → 2013-11-19 |
| 18 | Phase 2 finished | 2013-12-09 → 2013-12-20 (+11d) | 2013-12-09 → 2013-12-20 (+11d) |  |  |  | baseline start none → 2013-12-09; baseline finish none → 2013-12-09 |
| 19 | **Phase 3** | 2013-11-07 → 2013-11-12 A (+5d) | 2014-01-15 → 2014-01-28 (+13d) | 50d → 56d | 0% → 10% | 0d → -9d | baseline start none → 2013-11-07; baseline finish none → 2014-01-15 |
| 20 | T10 unpack and inspect | 2013-12-10 → 2013-12-23 (+13d) | 2013-12-18 → 2013-12-31 (+13d) |  |  | 0d → -9d | baseline start none → 2013-12-10; baseline finish none → 2013-12-18 |
| 21 | T11 install services | 2013-11-07 → 2013-11-12 A (+5d) | 2013-11-19 → 2013-11-22 (+3d) |  | 0% → 40% | 21d → 18d | baseline start none → 2013-11-07; baseline finish none → 2013-11-19 |
| 22 | T12 install equipment | 2013-12-19 → 2014-01-01 (+13d) | 2014-01-02 → 2014-01-15 (+13d) |  |  | 0d → -9d | baseline start none → 2013-12-19; baseline finish none → 2014-01-02 |
| 23 | Deliverable 4 | 2014-01-02 → 2014-01-15 (+13d) | 2014-01-02 → 2014-01-15 (+13d) |  |  | 9d → 0d | baseline start none → 2014-01-02; baseline finish none → 2014-01-02 |
| 24 | T13 workshop execution | 2014-01-03 → 2014-01-16 (+13d) | 2014-01-15 → 2014-01-28 (+13d) |  |  | 0d → -9d | baseline start none → 2014-01-03; baseline finish none → 2014-01-15 |
| 25 | Phase 3 finished | 2014-01-15 → 2014-01-28 (+13d) | 2014-01-15 → 2014-01-28 (+13d) |  |  | 0d → -9d | baseline start none → 2014-01-15; baseline finish none → 2014-01-15 |
| 26 | Project finished |  |  |  |  | -2d → -9d | baseline start none → 2014-01-15; baseline finish none → 2014-01-15 |
| 27 | **Project meetings** |  |  |  |  | 2.5d → 11.5d | baseline start none → 2013-10-07; baseline finish none → 2014-01-13 |
| 28 | Project meetings 1 |  |  |  |  | 74.5d → 81.5d | baseline start none → 2013-10-07; baseline finish none → 2013-10-07 |
| 29 | Project meetings 2 |  |  |  |  | 64.5d → 71.5d | baseline start none → 2013-10-21; baseline finish none → 2013-10-21 |
| 30 | Project meetings 3 |  |  |  |  | 54.5d → 61.5d | baseline start none → 2013-11-04; baseline finish none → 2013-11-04 |
| 31 | Project meetings 4 |  |  |  |  | 44.5d → 51.5d | baseline start none → 2013-11-18; baseline finish none → 2013-11-18 |
| 32 | Project meetings 5 |  |  |  |  | 34.5d → 41.5d | baseline start none → 2013-12-02; baseline finish none → 2013-12-02 |
| 33 | Project meetings 6 |  |  |  |  | 24.5d → 31.5d | baseline start none → 2013-12-16; baseline finish none → 2013-12-16 |
| 34 | Project meetings 7 |  |  |  |  | 14.5d → 21.5d | baseline start none → 2013-12-30; baseline finish none → 2013-12-30 |
| 35 | Project meetings 8 |  |  |  |  | 4.5d → 11.5d | baseline start none → 2014-01-13; baseline finish none → 2014-01-13 |

## Version 7 (saved 2013-09-10, file exercise_3.mpp)

Note of the change: exam started

Last finish stays 2014-01-28.

Added:

| ID | Task | Duration | Start | Finish | Predecessors | Constraint | Resources |
| --- | --- | --- | --- | --- | --- | --- | --- |
| 12 | Dev2 | 0d | 2013-11-27 | 2013-11-27 | 11 |  |  |
| 16 | Dev3 | 0d | 2013-12-17 | 2013-12-17 | 15 |  |  |
| 17 | T9 vist and supervise the rooms | 13d | 2013-11-10 | 2013-11-27 | 7SS, 11SS | start no later than 2013-11-10 | Teacher; Clerk [200%] |
| 23 | Dev4 | 0d | 2014-01-15 | 2014-01-15 | 22 |  |  |

Removed: 6 Deliverable 1; 12 Deliverable 2; 16 Deliverable 3; 20 T10 unpack and inspect

Changed:

| ID | Task | Start | Finish | Duration | Complete | Total float | Predecessors | Other |
| --- | --- | --- | --- | --- | --- | --- | --- | --- |
| 1 | **Organization of a workshop** | 2013-10-01 A → 2013-09-10 A (-21d) |  | 86d → 101d |  |  |  | constraint start no earlier than 2013-10-01 → none; baseline start 2013-10-01 → 2013-09-10; baseline finish 2014-01-15 → 2014-01-17 |
| 2 | Project start | 2013-10-01 → 2013-09-10 (-21d) | 2013-10-01 → 2013-09-10 (-21d) |  |  | 74.62d → 93.5d |  | baseline start 2013-10-01 → 2013-09-10; baseline finish 2013-10-01 → 2013-09-10 |
| 3 | **Phase 1** | 2013-10-01 A → 2013-09-10 A (-21d) | 2013-11-14 → 2013-11-26 (+12d) | 33d → 55.06d | 66% → 76% | 53d → 45.94d | 2 → none | baseline start 2013-10-01 → 2013-09-10; baseline finish 2013-10-28 → 2013-11-07 |
| 4 | T1 workshop market analysis | 2013-10-01 A → 2013-09-10 A (-21d) | 2013-10-10 → 2013-09-19 (-21d) |  |  | 21.62d → 28d |  | resources SR; PM [20%] → Sales representative; Project Manager [20%]; baseline start 2013-10-01 → 2013-09-10; baseline finish 2013-10-10 → 2013-09-19 |
| 5 | T2 recruit new staff |  | 2013-10-23 → 2013-10-18 (-5d) | 4d → 0.06d |  | 69d → 3.94d |  | resources PM [20%]; C [50%] → Project Manager [20%]; Clerk [5000%]; baseline finish 2013-10-18 → 2013-10-15 |
| 6 | Dev1 | 2014-01-15 → 2013-10-18 (-89d) | 2014-01-15 → 2013-10-18 (-89d) |  |  | 0d → 65.44d | 22FF → 5 | was named Deliverable 4; baseline start 2014-01-02 → 2013-10-15; baseline finish 2014-01-02 → 2013-10-15 |
| 7 | T3 choose new basic equipment | 2013-10-23 A → 2013-11-01 A (+9d) | 2013-11-14 A → 2013-11-26 A (+12d) |  |  |  | 4, 5SF+10d → 4, 5FS+10d | resources SR; C [200%] → Sales representative; Clerk [200%]; baseline start 2013-10-18 → 2013-10-29; baseline finish 2013-10-28 → 2013-11-07 |
| 8 | Phase 1 finished | 2013-11-14 → 2013-11-26 (+12d) | 2013-11-14 → 2013-11-26 (+12d) |  |  | 53d → 38.44d |  | baseline start 2013-10-28 → 2013-11-07; baseline finish 2013-10-28 → 2013-11-07 |
| 9 | **Phase 2** | 2013-10-11 A → 2013-10-23 A (+12d) |  | 51d → 42.94d | 64% → 62% |  |  | baseline start 2013-10-09 → 2013-10-18; baseline finish 2013-12-09 → 2013-12-11 |
| 10 | T4 choose new special equipment | 2013-10-11 A → 2013-10-24 A (+13d) | 2013-10-25 → 2013-11-07 (+13d) | 10.88d → 10.82d | 28% → 27% | 18.62d → 2.12d | 4, 5SF+4d → 4, 5FS+4d | resources C [200%] → Clerk [200%]; baseline start 2013-10-11 → 2013-10-21; baseline finish 2013-10-23 → 2013-11-01 |
| 11 | T5 draw new layout | 2013-11-06 → 2013-11-15 (+9d) | 2013-11-15 → 2013-11-27 (+12d) |  |  | 3d → -4.06d |  | resources SR; C [300%] → Sales representative; Clerk [300%]; baseline start 2013-11-01 → 2013-11-12; baseline finish 2013-11-12 → 2013-11-22 |
| 13 | T6 train new staff |  |  |  |  |  |  | resources Te; C [200%] → Teacher; Clerk [200%] |
| 14 | T7 order new basic equipment | 2013-10-14 A → 2013-10-23 A (+9d) |  | 50d → 42.94d |  |  |  | resources PM [20%] → Project Manager [20%]; baseline start 2013-10-09 → 2013-10-18; baseline finish 2013-11-12 → 2013-11-22 |
| 15 | T8 order new special equipment |  | 2013-12-13 → 2013-12-17 (+4d) | 5d → 6.5d |  | 0d → -5.5d |  | resources SR; C [400%] → Sales representative; Clerk [400%]; baseline finish 2013-12-09 → 2013-12-11 |
| 18 | Phase 2 finished |  |  |  |  |  |  | baseline start 2013-12-09 → 2013-12-11; baseline finish 2013-12-09 → 2013-12-11 |
| 19 | **Phase 3** | 2013-11-12 A → 2013-11-15 A (+3d) |  | 56d → 53d | 10% → 12% |  |  | baseline start 2013-11-07 → 2013-11-15; baseline finish 2014-01-15 → 2014-01-17 |
| 20 | T10 unpack and inspect equipment | 2013-11-06 → 2013-12-23 (+47d) | 2013-11-22 → 2013-12-31 (+39d) | 13d → 7d |  | 3d → -9d | 7SS, 11SS → 14, 15 | was named T9 visit and supervise the rooms; constraint start no later than 2013-11-10 → none; resources Te; C [200%] → Sales representative; Clerk [200%]; baseline start 2013-11-01 → 2013-12-11; baseline finish 2013-11-19 → 2013-12-20 |
| 21 | T11 install services | 2013-11-12 A → 2013-11-15 A (+3d) | 2013-11-22 → 2013-11-28 (+6d) | 9d → 9.75d | 40% → 44% | 18d → 14.25d | 20FF → 17FF | resources PM [20%]; C → Project Manager [20%]; Clerk; baseline start 2013-11-07 → 2013-11-15; baseline finish 2013-11-19 → 2013-11-27 |
| 22 | T12 install equipment |  |  |  |  |  | T10 unpack and inspect, 21 → 20, 21 | resources SR; C [200%] → Sales representative; Clerk [200%]; baseline start 2013-12-19 → 2013-12-20; baseline finish 2014-01-02 → 2014-01-06 |
| 24 | T13 workshop execution |  |  |  |  |  |  | resources PM [20%]; E [2000%] → Project Manager [20%]; Equipment [2000%]; baseline start 2014-01-03 → 2014-01-06; baseline finish 2014-01-15 → 2014-01-17 |
| 25 | Phase 3 finished |  |  |  |  |  |  | baseline start 2014-01-15 → 2014-01-17; baseline finish 2014-01-15 → 2014-01-17 |
| 26 | Project finished |  |  |  |  |  | 25FF → 25 |  |
